# Emergency SOS App

Schedule from MS Project, 2026-01-01 to 2026-11-12, costs in R.

## Calendars

- Standard: Mon-Fri 08:00-12:00, 13:00-17:00; Sat-Sun off.

## Resources

| Resource | Rate |
| --- | --- |
| Project Manager | 550 |
| DevOps Engineer | 420 |
| UI/UX Designer | 400 |
| QA Tester | 360 |
| Finance/Admin Officer | 300 |
| Software Engineer | 480 |

## Schedule

| ID | WBS | Task | Type | Duration | Start | Finish | Predecessors | Total slack | Resources | Work | Cost |
| --- | --- | --- | --- | --- | --- | --- | --- | --- | --- | --- | --- |
| 1 | 1 | **Planning** |  | 30d | 2026-01-01 | 2026-02-11 |  | 0d |  | 240h | 132,000 |
| 2 | 1.1 | **Requirements & Scope** |  | 15d | 2026-01-01 | 2026-01-22 |  | 0d |  | 120h | 66,000 |
| 3 | 1.1.1 | Stakeholder & scope workshops | manual | 7d | 2026-01-01 | 2026-01-09 |  |  | Project Manager | 56h | 30,800 |
| 4 | 1.1.2 | Requirements & NFRs baseline | manual | 8d | 2026-01-12 | 2026-01-21 | 3 |  | Project Manager | 64h | 35,200 |
| 5 | 1.1.3 | Planning Go/No-Go (milestone) | milestone, manual | 0d | 2026-01-22 | 2026-01-22 | 4 |  |  |  |  |
| 6 | 1.2 | **Plans & Baselines** |  | 15d | 2026-01-22 | 2026-02-11 |  | 0d |  | 120h | 66,000 |
| 7 | 1.2.1 | Management plans (schedule/cost/risk/comms) | manual | 8d | 2026-01-22 | 2026-02-02 | 5 |  | Project Manager | 64h | 35,200 |
| 8 | 1.2.2 | WBS, dependencies & set baselines (MSP) | manual | 7d | 2026-02-03 | 2026-02-11 | 7 |  | Project Manager | 56h | 30,800 |
| 9 | 2 | **Design** |  | 50d | 2026-02-12 | 2026-04-23 | 1 | 0d |  | 704h | 343,200 |
| 10 | 2.1 | **UX & Prototypes** |  | 25d | 2026-02-12 | 2026-03-18 |  | 0d |  | 400h | 190,000 |
| 11 | 2.1.1 | UX research & wireframes | manual | 12d | 2026-02-12 | 2026-02-27 | 8 |  | UI/UX Designer; Project Manager | 192h | 91,200 |
| 12 | 2.1.2 | Design system & clickable prototype | manual | 13d | 2026-03-02 | 2026-03-18 | 11 |  | UI/UX Designer; Project Manager | 208h | 98,800 |
| 13 | 2.2 | **Technical Design** |  | 25d | 2026-03-19 | 2026-04-23 |  | 0d |  | 304h | 153,200 |
| 14 | 2.2.1 | Solution architecture (app/backend/auth) | manual | 12d | 2026-03-19 | 2026-04-03 | 12 |  | Software Engineer | 96h | 46,080 |
| 15 | 2.2.2 | API & data model (+ NFR specs) | manual | 13d | 2026-04-06 | 2026-04-22 | 14 |  | Software Engineer; Project Manager | 208h | 107,120 |
| 16 | 2.2.3 | Design approved (milestone) | milestone, manual | 0d | 2026-04-23 | 2026-04-23 | 15 |  |  |  |  |
| 17 | 3 | **Development** |  | 90d | 2026-04-23 | 2026-08-27 | 9 | 0d |  | 1440h | 659,200 |
| 18 | 3.1 | **Foundation & Setup** |  | 30d | 2026-04-23 | 2026-06-03 |  | 0d |  | 240h | 105,600 |
| 19 | 3.1.1 | Repo/CI & environments | manual | 10d | 2026-04-23 | 2026-05-06 | 16 |  | DevOps Engineer | 80h | 33,600 |
| 20 | 3.1.2 | App skeleton & state management | manual | 10d | 2026-05-07 | 2026-05-20 | 19 |  | Software Engineer | 80h | 38,400 |
| 21 | 3.1.3 | Security baseline & telemetry | manual | 10d | 2026-05-21 | 2026-06-03 | 20 |  | DevOps Engineer | 80h | 33,600 |
| 22 | 3.2 | **Core Features** |  | 30d | 2026-06-04 | 2026-07-15 |  | 0d |  | 720h | 343,200 |
| 23 | 3.2.1 | SOS alert flow | manual | 10d | 2026-06-04 | 2026-06-17 | 21 |  | Software Engineer; UI/UX Designer; Project Manager | 240h | 114,400 |
| 24 | 3.2.2 | GPS & live location | manual | 10d | 2026-06-18 | 2026-07-01 | 23 |  | Project Manager; Software Engineer; UI/UX Designer | 240h | 114,400 |
| 25 | 3.2.3 | Contacts/templates & offline buffer | manual | 10d | 2026-07-02 | 2026-07-15 | 24 |  | Project Manager; Software Engineer; UI/UX Designer | 240h | 114,400 |

| ID | WBS | Task | Type | Duration | Start | Finish | Predecessors | Total slack | Resources | Work | Cost |
| --- | --- | --- | --- | --- | --- | --- | --- | --- | --- | --- | --- |
| 26 | 3.3 | **Integrations & Hardening** |  | 30d | 2026-07-16 | 2026-08-27 |  | 0d |  | 480h | 210,400 |
| 27 | 3.3.1 | SMS/Email gateway integration | manual | 10d | 2026-07-16 | 2026-07-29 | 25 |  | Software Engineer; UI/UX Designer | 160h | 70,400 |
| 28 | 3.3.2 | Error logging & analytics | manual | 10d | 2026-07-30 | 2026-08-12 | 27 |  | QA Tester; Software Engineer | 160h | 67,200 |
| 29 | 3.3.3 | Internal QA & polish | manual | 10d | 2026-08-13 | 2026-08-26 | 28 |  | Project Manager; QA Tester | 160h | 72,800 |
| 30 | 3.3.4 | Prototype complete (milestone) | milestone, manual | 0d | 2026-08-27 | 2026-08-27 | 29 |  |  |  |  |
| 31 | 4 | **Testing** |  | 30d | 2026-08-27 | 2026-10-08 | 17 | 0d |  | 600h | 268,160 |
| 32 | 4.1 | **System Testing** |  | 15d | 2026-08-27 | 2026-09-16 |  | 0d |  | 360h | 159,520 |
| 33 | 4.1.1 | Functional & regression cycles | manual | 8d | 2026-08-27 | 2026-09-07 | 30 |  | Project Manager; QA Tester; Software Engineer | 192h | 88,960 |
| 34 | 4.1.2 | Performance & security testing | manual | 7d | 2026-09-08 | 2026-09-16 | 33 |  | DevOps Engineer; QA Tester; Software Engineer | 168h | 70,560 |
| 35 | 4.2 | **UAT & Stabilization** |  | 15d | 2026-09-17 | 2026-10-08 |  | 0d |  | 240h | 108,640 |
| 36 | 4.2.1 | UAT execution & feedback | manual | 8d | 2026-09-17 | 2026-09-28 | 34 |  | Project Manager; QA Tester | 128h | 58,240 |
| 37 | 4.2.2 | Bug-fix sprint & release candidate | manual | 7d | 2026-09-29 | 2026-10-07 | 36 |  | DevOps Engineer; Software Engineer | 112h | 50,400 |
| 38 | 4.2.3 | Test sign-off (milestone) | milestone, manual | 0d | 2026-10-08 | 2026-10-08 | 37 |  |  |  |  |
| 39 | 5 | **Deployment** |  | 15d | 2026-10-08 | 2026-10-29 | 31 | 0d |  | 400h | 189,360 |
| 40 | 5.1 | **Release Prep** |  | 5d | 2026-10-08 | 2026-10-14 |  | 0d |  | 160h | 73,360 |
| 41 | 5.1.1 | Store assets & compliance | manual | 3d | 2026-10-08 | 2026-10-12 | 38 |  | DevOps Engineer; UI/UX Designer; Project Manager; Software Engineer | 96h | 44,400 |
| 42 | 5.1.2 | Final build signing & docs | manual | 2d | 2026-10-13 | 2026-10-14 | 41 |  | DevOps Engineer; Project Manager; QA Tester; Software Engineer | 64h | 28,960 |
| 43 | 5.2 | **Production Rollout** |  | 10d | 2026-10-15 | 2026-10-29 |  | 0d |  | 240h | 116,000 |
| 44 | 5.2.1 | Submission & prod rollout | manual | 5d | 2026-10-15 | 2026-10-21 | 42 |  | DevOps Engineer; Project Manager; Software Engineer | 120h | 58,000 |
| 45 | 5.2.2 | Monitoring & handover | manual | 5d | 2026-10-22 | 2026-10-28 | 44 |  | Project Manager; DevOps Engineer; Software Engineer | 120h | 58,000 |
| 46 | 5.2.3 | Go-Live sign-off (milestone) | milestone, manual | 0d | 2026-10-29 | 2026-10-29 | 45 |  |  |  |  |
| 47 | 6 | **Project Closure** |  | 10d | 2026-10-29 | 2026-11-12 | 39 | 0d |  | 80h | 34,000 |
| 48 | 6.1 | Close-out | manual | 5d | 2026-10-29 | 2026-11-04 | 46 |  |  |  |  |
| 49 | 6.2 | Final report & financial close | manual | 3d | 2026-11-05 | 2026-11-09 | 48 |  | Finance/Admin Officer; Project Manager | 48h | 20,400 |
| 50 | 6.3 | Sponsor presentation & archive | manual | 2d | 2026-11-10 | 2026-11-11 | 49 |  | Project Manager; Finance/Admin Officer | 32h | 13,600 |
| 51 | 6.4 | Project closed (milestone) | milestone, manual | 0d | 2026-11-12 | 2026-11-12 | 50 |  |  |  |  |
